# FoodiesProjectPlanV1.1

How a schedule from MS Project changed from version to version. A marks actual dates.

## Version 1 (saved 2019-05-10)

Note of the change: Update FoodiesProjectSchedule.mpp

| ID | WBS | Task | Duration | Start | Finish | Predecessors | Complete | Total float |
| --- | --- | --- | --- | --- | --- | --- | --- | --- |
| 1 | 1 | **Foodies** | 19.43d | 2019-04-27 | 2019-05-18 |  | 28% |  |
| 2 | 1.1 | **Initiation** | 1d | 2019-04-27 A | 2019-04-27 A |  | 100% |  |
| 3 |  | Gather requirements | 1d | 2019-04-27 A | 2019-04-27 A |  | 100% |  |
| 4 |  | SIQ | 0d | 2019-04-27 A | 2019-04-27 A | 3 | 100% |  |
| 5 | 1.2 | **Initial planning** | 5.71d | 2019-04-28 | 2019-05-02 | 3, 2 | 57% |  |
| 6 | 1.2.1 | **Project Plan** | 0d | 2019-04-01 | 2019-04-01 |  | 33% |  |
| 7 |  | Project Description | 0d | 2019-04-28 A | 2019-04-28 A |  | 100% |  |
| 8 |  | Objective | 0d | 2019-04-28 A | 2019-04-28 A | 7 | 100% |  |
| 9 |  | Scope | 1d | 2019-04-28 A | 2019-04-29 | 8 | 25% | 0d |
| 10 |  | Development approach | 0d | 2019-04-28 A | 2019-04-29 A | 9 | 100% |  |
| 11 |  | Software Tools | 1d | 2019-04-28 A | 2019-04-30 | 10 | 40% | -0.6d |
| 12 |  | Project schedule | 1d | 2019-04-29 A | 2019-04-30 | 6 | 50% |  |
| 13 |  | Project risk | 1d | 2019-04-30 | 2019-04-30 | 6 |  |  |
| 14 |  | Test plan | 2d | 2019-04-29 A | 2019-05-01 | 9 | 95% |  |
| 15 |  | CCB | 0d | 2019-04-30 A | 2019-04-30 | 12 | 80% |  |
| 16 |  | cm plan | 1d | 2019-04-30 A | 2019-05-01 | 12 | 95% |  |
| 17 |  | Skill Matrix | 0d | 2019-05-01 A | 2019-05-01 A | 16 | 100% |  |
| 18 |  | Project Issues | 0d | 2019-05-01 A | 2019-05-01 | 17 | 95% |  |
| 19 | 1.3 | **Analysis** | 4.57d | 2019-05-02 A | 2019-05-07 | 5 | 99% |  |
| 20 |  | Requirements Analysis | 0.5d | 2019-05-02 A | 2019-05-02 A | 5 | 100% |  |
| 21 | 1.4 | **Design** | 2d | 2019-05-07 A | 2019-05-08 | 19 | 80% |  |
| 22 |  | High level design | 0d | 2019-05-07 A | 2019-05-07 | 5 | 99% |  |
| 23 |  | UseCase And Usecase discription | 1d | 2019-05-07 A | 2019-05-07 | 5 | 90% |  |
| 24 |  | ERD | 1d | 2019-05-08 A | 2019-05-08 | 5 | 50% |  |
| 25 |  | Class diagram | 0d | 2019-05-07 A | 2019-05-07 | 5 | 90% |  |
| 26 |  | DFD | 0d | 2019-05-07 A | 2019-05-07 | 5 | 95% |  |
| 27 |  | Wireframes | 1d | 2019-05-07 A | 2019-05-07 A | 5 | 100% |  |
| 28 |  | Implementation | 8d | 2019-05-08 | 2019-05-17 | 21 |  |  |
| 29 |  | Testing | 8d | 2019-04-27 A | 2019-05-17 | 28SS, 2SS, 5SS, 19SS, 21SS |  |  |
| 30 |  | Deployment | 0.29d | 2019-05-17 | 2019-05-17 | 29 |  |  |
| 31 |  | closing | 0d | 2019-05-17 | 2019-05-17 | 30 |  | 0d |

## Version 2 (saved 2019-05-16)

Note of the change: Update FoodiesProjectSchedule.mpp

Last finish stays 2019-05-18. Complete tasks 8 → 11.

Added:

| ID | Task | Duration | Start | Finish | Predecessors | Resources |
| --- | --- | --- | --- | --- | --- | --- |
| 29 | Frontend offers and home page | 1d | 2019-05-14 A | 2019-05-14 A | 27 | Labtops; Maryam M. (Dev. Team); Software Tools |
| 30 | Front end login and register page | 1d | 2019-05-14 A | 2019-05-14 A | 27 | Labtops; Marwa (Dev. Team); Software Tools |
| 31 | Front end Add Menu page | 1d | 2019-05-15 A | 2019-05-15 A | 27 | Aya Hamdy (PM); Labtops [90%]; Software Tools [90%] |
| 32 | View menu and delete user pages | 1d | 2019-05-14 A | 2019-05-14 | 27 | Hossam (Dev. Team); Labtops; Software Tools |
| 33 | Admin and users profiles | 1d | 2019-05-14 A | 2019-05-14 | 27 | Dina (Dev. Team); Labtops; Software Tools |
| 34 | Backend of all pages | 3d | 2019-05-15 A | 2019-05-17 | 29, 30, 31, 32, 33 | Labtops; Mariam N. (Dev. Team); Software Tools |

Changed:

| ID | Task | Complete |
| --- | --- | --- |
| 1 | **Foodies** | 28% → 49% |
| 28 | **Implementation** | 0% → 71% |

## Version 3 (saved 2019-05-24)

Note of the change: Update FoodiesProjectSchedule.mpp

Last finish 2019-05-18 → 2019-05-25 (+7d). Complete tasks 11 → 26.

Changed:

| ID | Task | Start | Finish | Duration | Complete | Total float | Other |
| --- | --- | --- | --- | --- | --- | --- | --- |
| 1 | **Foodies** |  | 2019-05-18 → 2019-05-25 (+7d) | 19.43d → 25.14d | 49% → 90% |  |  |
| 5 | **Initial planning** | 2019-04-28 A |  |  | 57% → 89% |  |  |
| 6 | **Project Plan** |  |  |  | 33% → 63% |  |  |
| 11 | Software Tools |  | 2019-04-30 A |  | 40% → 100% | -0.6d → none |  |
| 12 | Project schedule |  | 2019-04-30 A |  | 50% → 100% |  |  |
| 13 | Project risk | 2019-04-30 A | 2019-04-30 A |  | 0% → 100% |  |  |
| 14 | Test plan |  | 2019-05-01 A |  | 95% → 100% |  |  |
| 15 | CCB |  | 2019-04-30 A |  | 80% → 100% |  |  |
| 16 | cm plan |  | 2019-05-01 A |  | 95% → 100% |  |  |
| 18 | Project Issues |  | 2019-05-01 A |  | 95% → 100% |  |  |
| 19 | **Analysis** |  | 2019-05-07 A |  | 99% → 100% |  |  |
| 21 | **Design** |  | 2019-05-08 A |  | 80% → 100% |  |  |
| 22 | High level design |  | 2019-05-07 A |  | 99% → 100% |  |  |
| 23 | UseCase And Usecase discription |  | 2019-05-07 A |  | 90% → 100% |  |  |
| 24 | ERD |  | 2019-05-08 A |  | 50% → 100% |  |  |
| 25 | Class diagram |  | 2019-05-07 A |  | 90% → 100% |  |  |
| 26 | DFD |  | 2019-05-07 A |  | 95% → 100% |  |  |
| 28 | **Implementation** |  | 2019-05-17 A |  | 71% → 100% |  |  |
| 32 | View menu and delete user pages |  | 2019-05-14 A |  | 90% → 100% |  |  |
| 33 | Admin and users profiles |  | 2019-05-14 A |  | 85% → 100% |  |  |
| 34 | Backend of all pages |  | 2019-05-17 A |  | 30% → 100% |  |  |
| 35 | Testing | 2019-04-27 A → 2019-04-17 A (-10d) | 2019-05-17 → 2019-05-24 (+7d) | 8d → 23.14d | 0% → 85% |  | resources none → Aya Hamdy (PM); Dina (Dev. Team); Hossam (Dev. Team); Labtops; Mariam N. (Dev. Team); Marwa (Dev. Team); Maryam M. (Dev. Team); Software Tools |
| 36 | Deployment | 2019-05-17 → 2019-05-25 (+8d) | 2019-05-17 → 2019-05-25 (+8d) |  |  |  |  |
| 37 | closing | 2019-05-17 → 2019-05-25 (+8d) | 2019-05-17 → 2019-05-25 (+8d) |  |  |  |  |
