# FoodiesProjectPlanV1.1

How a schedule from MS Project changed from version to version. A marks actual dates.

## Version 1 (saved 2019-04-30)

Note of the change: Add More resources to resouce sheet

| ID | WBS | Task | Duration | Start | Finish | Predecessors | Complete | Total float |
| --- | --- | --- | --- | --- | --- | --- | --- | --- |
| 1 | 1 | **Foodies** | 18.29d | 2019-04-27 A | 2019-05-18 |  | 11% |  |
| 2 | 1.1 | **Initiation** | 1d | 2019-04-27 A | 2019-04-27 A |  | 100% |  |
| 3 |  | Gather requirements | 1d | 2019-04-27 A | 2019-04-27 A |  | 100% |  |
| 4 |  | SIQ | 0d | 2019-04-27 A | 2019-04-27 A | 3 | 100% |  |
| 5 | 1.2 | **Initial planning** | 4.57d | 2019-04-28 A | 2019-05-01 | 3, 2 | 29% |  |
| 6 | 1.2.1 | **Project Plan** | 1d | 2019-04-28 A | 2019-04-29 |  | 33% | 0d |
| 7 |  | Project Description | 0d | 2019-04-28 A | 2019-04-28 A |  | 100% |  |
| 8 |  | Objective | 0d | 2019-04-28 A | 2019-04-28 A | 7 | 100% |  |
| 9 |  | Scope | 1d | 2019-04-28 A | 2019-04-29 | 8 | 25% | 0d |
| 10 |  | Development approach | 0d | 2019-04-28 A | 2019-04-28 A | 9 | 100% |  |
| 11 |  | Software Tools | 1d | 2019-04-28 A | 2019-04-29 | 10 | 40% | 0d |
| 12 |  | Project schedule | 1d | 2019-04-29 A | 2019-04-30 | 6 | 50% |  |
| 13 |  | Project risk | 1d | 2019-04-29 | 2019-04-30 | 6 |  |  |
| 14 | 1.3 | **Analysis** | 4d | 2019-05-01 A | 2019-05-06 A | 5 | 100% |  |
| 15 |  | Requirements Analysis | 0.5d | 2019-05-01 A | 2019-05-02 A | 5 | 100% |  |
| 16 |  | Design | 2d | 2019-05-07 | 2019-05-08 | 14 |  |  |
| 17 |  | Implementation | 8d | 2019-05-08 | 2019-05-17 | 16 |  |  |
| 18 |  | Testing | 8d | 2019-04-27 A | 2019-05-17 | 17SS, 2SS, 5SS, 14SS, 16SS |  |  |
| 19 |  | Deployment | 0.29d | 2019-05-17 | 2019-05-17 | 18 |  |  |
| 20 |  | closing | 0d | 2019-05-18 | 2019-05-18 | 19 |  |  |

## Version 2 (saved 2019-04-30)

Note of the change: Merge branch 'Documents' of https://github.com/AyaHamdyAhmed/Foodies into Documents

Last finish 2019-05-18 → 2019-05-17 (-1d).

Changed:

| ID | Task | Start | Finish | Duration | Total float |
| --- | --- | --- | --- | --- | --- |
| 1 | **Foodies** |  | 2019-05-18 → 2019-05-17 (-1d) | 18.29d → 17.14d | none → 0d |
| 20 | closing | 2019-05-18 → 2019-05-17 (-1d) | 2019-05-18 → 2019-05-17 (-1d) |  | none → 0d |
